# lab_01_4

Schedule from MS Project, 2021-03-01 to 2021-07-29, status date 2021-04-30, costs in р., A marks actual dates.
Microsoft
Количество работников - 16 человек / Бюджет - 50 000 рублей / Продолжительность - 6 месяцев

## Calendars

- Стандартный: Mon-Fri 09:00-13:00, 14:00-18:00; Sat-Sun off. Exceptions (off unless hours are given): 2021-03-08 (Международный женский день), 2021-05-03 (Майские каникулы), 2021-05-09 to 2021-05-10 (День победы), 2021-06-12 to 2021-06-14 (День России).

## Resources

| Resource | Group | Rate | Cost per use |
| --- | --- | --- | --- |
| Ведущий программист | Программирование | 10 | 100 |
| Программист#1 | Программирование | 7 | 50 |
| Программист#2 | Программирование | 7 | 50 |
| Программист#3 | Программирование | 7 | 50 |
| Программист#4 | Программирование | 7 | 50 |
| Системный аналитик | Анализ | 20 | 300 |
| Художник-дизайнер | Дизайн | 8 | 70 |
| Технический писатель | Документация | 5 | 20 |
| Web-дизайнер | Internet | 7 | 50 |
| 3D аниматор | Дизайн | 8 | 70 |
| Мультимедиа-корреспондент | М-медиа | 3 | 20 |
| Наборщик данных#1 | Ввод данных | 2 | 10 |
| Наборщик данных#2 | Ввод данных | 2 | 10 |
| Наборщик данных#3 | Ввод данных | 2 | 10 |
| Наборщик данных#4 | Ввод данных | 2 | 10 |
| Наборщик данных#5 | Ввод данных | 2 | 10 |
| Дополнительный сервер | Аренда | 2 |  |
| Собственный сервер | Аренда | 4500 |  |
| Дополнительный программист | Программирование | 7 |  |

## Schedule

| ID | WBS | Task | Type | Duration | Start | Finish | Predecessors | Complete | Remaining | Baseline start | Baseline finish | Baseline duration | Total slack | Free slack | Constraint | Resources | Work | Actual work | Cost | Baseline cost | Actual cost |
| --- | --- | --- | --- | --- | --- | --- | --- | --- | --- | --- | --- | --- | --- | --- | --- | --- | --- | --- | --- | --- | --- |
| 1 | 1 | Начало проекта | milestone | 0w | 2021-03-01 08:00 A | 2021-03-01 08:00 A |  | 100% |  | 2021-03-01 08:00 | 2021-03-01 08:00 | 0w |  |  |  |  |  |  |  |  |  |
| 2 | 2 | **Создание интерфейса** |  | 78.09d | 2021-03-01 09:00 A | 2021-06-23 09:41 A | 1 | 100% |  | 2021-03-01 09:00 | 2021-06-17 11:52 | 74.36d |  |  |  |  | 560h | 560h | 5,600 | 5,650 | 5,600 |
| 3 | 2.1 | **Разработка дизайна интерфейса** |  | 25.62d | 2021-03-01 09:00 A | 2021-04-06 15:00 A |  | 100% |  | 2021-03-01 09:00 | 2021-04-06 15:00 | 25.62d |  |  |  |  | 320h | 320h | 2,770 | 2,770 | 2,770 |
| 4 | 2.1.1 | Разработка 2D графических элементов |  | 3.73w | 2021-03-01 09:00 A | 2021-03-29 13:00 A |  | 100% |  | 2021-03-01 09:00 | 2021-03-23 12:00 | 3w |  |  |  | Художник-дизайнер | 120h | 120h | 1,030 | 1,030 | 1,030 |
| 5 | 2.1.2 | Разработка 3D графичиских элементов |  | 2w | 2021-03-01 09:00 A | 2021-03-16 11:00 A | 4SS | 100% |  | 2021-03-01 09:00 | 2021-03-16 11:00 | 2w |  |  |  | 3D аниматор | 80h | 80h | 710 | 710 | 710 |
| 6 | 2.1.3 | Создание заставки |  | 3w | 2021-03-16 11:00 A | 2021-04-06 15:00 A | 5 | 100% |  | 2021-03-16 11:00 | 2021-04-06 15:00 | 3w |  |  |  | 3D аниматор | 120h | 120h | 1,030 | 1,030 | 1,030 |
| 7 | 2.2 | Программирование интерфейса |  | 1.5w | 2021-06-10 14:41 A | 2021-06-23 09:41 A | 3, 12 | 100% |  | 2021-06-04 16:52 | 2021-06-17 11:52 | 1.5w |  |  |  | Программист#3; Программист#4; Программист#2; Дополнительный программист | 240h | 240h | 1,830 | 1,880 | 1,830 |
| 8 | 3 | **Построение базы объектов** |  | 87.12d | 2021-03-23 17:00 A | 2021-07-27 18:00 |  | 29% | 61.5d | 2021-03-23 12:00 | 2021-07-15 10:49 | 78.85d | 1.4d |  |  | Дополнительный сервер; Собственный сервер | 2911h | 511h | 14,462 | 15,099.64 | 4,402 |
| 9 | 3.1 | Анализ и построение структуры базы объектов |  | 2w | 2021-03-23 17:00 A | 2021-04-07 12:00 A |  | 100% |  | 2021-03-23 12:00 | 2021-04-06 15:00 | 2w |  |  |  | Системный аналитик | 80h | 80h | 1,900 | 1,900 | 1,900 |
| 10 | 3.2 | Программирование средств обработки базы объектов |  | 3w | 2021-04-09 09:00 A | 2021-04-29 18:00 A | 9 | 100% |  | 2021-04-07 15:49 | 2021-04-19 10:49 | 1.5w |  |  | finish no earlier than 2021-04-22 18:00 | Программист#3; Программист#4; Программист#2; Дополнительный программист | 240h | 240h | 1,830 | 1,880 | 1,830 |
| 11 | 3.3 | Наполнение базы объектов |  | 12w | 2021-04-30 09:00 | 2021-07-27 18:00 | 10 |  |  | 2021-04-19 10:49 | 2021-07-15 10:49 | 12w | 1.4d |  |  | Наборщик данных#1; Наборщик данных#2; Наборщик данных#3; Наборщик данных#4; Наборщик данных#5 | 2400h |  | 4,850 | 4,850 |  |
| 12 | 4 | **Создание ядра GIS** |  | 70.46d | 2021-03-01 10:00 A | 2021-06-10 14:41 |  | 46% | 37.9d | 2021-03-01 09:00 | 2021-06-04 16:52 | 66.86d | 33.81d |  |  |  | 1861.18h | 661.18h | 17,887.55 | 18,196.34 | 8,052.53 |
| 13 | 4.1 | Анализ и проектирование ядра |  | 3w | 2021-03-01 10:00 A | 2021-03-23 17:00 A |  | 100% |  | 2021-03-01 09:00 | 2021-03-23 12:00 | 3w |  |  |  | Ведущий программист; Системный аналитик | 240h | 240h | 4,000 | 4,000 | 4,000 |
| 14 | 4.2 | Создание модели ядра |  | 2.93w | 2021-03-23 17:00 A | 2021-04-13 14:02 A | 13 | 100% |  | 2021-03-23 12:00 | 2021-04-06 12:49 | 2.02w |  |  |  | Ведущий программист; Программист#1; Программист#2; Программист#3; Программист#4; Дополнительный программист | 381.18h | 381.18h | 3,162.53 | 3,336.46 | 3,162.53 |
| 15 | 4.3 | Тестирование модели ядра |  | 0.33w | 2021-04-13 16:17 A | 2021-04-19 10:13 A | 14 | 100% |  | 2021-04-06 12:49 | 2021-04-07 15:49 | 0.25w |  |  |  | Программист#2; Программист#3; Программист#4 | 40h | 40h | 430 | 480 | 430 |
| 16 | 4.4 | Создание рабочей версии ядра |  | 7.29w | 2021-04-19 10:13 | 2021-06-10 14:41 | 15 |  |  | 2021-04-07 15:49 | 2021-06-04 16:52 | 8w | 33.81d |  |  | Ведущий программист; Программист#2; Программист#3; Программист#4; Дополнительный программист | 1200h |  | 9,295.02 | 9,379.88 |  |
| 17 | 5 | Создание мультимедиа - наполнения |  | 6w | 2021-04-06 15:00 | 2021-05-24 11:00 | 3 |  |  | 2021-04-06 15:00 | 2021-05-21 13:00 | 6w | 47.15d |  |  | Мультимедиа-корреспондент | 240h |  | 740 | 740 |  |
| 18 | 6 | Создание справочной системы |  | 2w | 2021-07-02 12:41 | 2021-07-16 15:41 | 7 |  |  | 2021-06-28 15:52 | 2021-07-12 17:52 | 2w | 8.69d | 16.06d |  | Технический писатель | 80h |  | 420 | 420 |  |
| 19 | 7 | **Создание руководства пользователя** |  | 17.38d | 2021-06-08 09:41 | 2021-07-02 12:41 | 7FS-10d |  |  | 2021-06-02 11:52 | 2021-06-28 15:52 | 17.38d | 0d |  |  |  | 160h |  | 1,010 | 1,010 |  |
| 20 | 7.1 | Разработка дизайна руководства |  | 1w | 2021-06-08 09:41 | 2021-06-23 11:41 |  |  |  | 2021-06-02 11:52 | 2021-06-17 14:52 | 1w | 0d |  |  | Художник-дизайнер | 40h |  | 390 | 390 |  |
| 21 | 7.2 | Написание руководства пользователя |  | 3w | 2021-06-10 09:41 | 2021-07-02 12:41 | 20SS+2d |  |  | 2021-06-04 11:52 | 2021-06-28 15:52 | 3w | 0d |  |  | Технический писатель | 120h |  | 620 | 620 |  |
| 22 | 8 | **Создание web - сайта и поддержка** |  | 23.75d | 2021-06-10 09:41 | 2021-07-14 16:41 |  |  |  | 2021-06-04 11:52 | 2021-07-08 16:52 | 23.5d | 0d |  |  |  | 248h |  | 2,106 | 2,106 |  |
| 23 | 8.1 | Разработка структуры сайта |  | 1d | 2021-06-10 09:41 | 2021-06-11 09:41 | 21SS |  |  | 2021-06-04 11:52 | 2021-06-07 11:52 | 1d | 0d |  |  | Web-дизайнер | 8h |  | 106 | 106 |  |
| 24 | 8.2 | Разработка дизайна сайта |  | 1.4w | 2021-06-11 09:41 | 2021-06-23 10:41 | 23 |  |  | 2021-06-07 11:52 | 2021-06-17 12:52 | 1.38w | 0d |  |  | 3D аниматор; Web-дизайнер; Художник-дизайнер | 120h |  | 1,110 | 1,110 |  |
| 25 | 8.3 | Наполнение сайта |  | 3w | 2021-06-23 10:41 | 2021-07-14 16:41 | 24 |  |  | 2021-06-17 12:52 | 2021-07-08 16:52 | 3w | 0d |  |  | Web-дизайнер | 120h |  | 890 | 890 |  |
| 26 | 9 | Тестирование сайта |  | 3.11w | 2021-07-07 16:41 | 2021-07-29 12:12 | 22FS-1w |  |  | 2021-07-01 16:52 | 2021-07-20 09:18 | 2.44w | 0d |  | start no earlier than 2021-07-01 08:00 | Ведущий программист; Программист#2; Программист#3; Программист#4 | 480h |  | 3,965.56 | 3,945.15 |  |
| 27 | 10 | Сдача сайта в эксплуатацию | milestone | 0w | 2021-07-29 12:12 | 2021-07-29 12:12 | 26 |  |  | 2021-07-20 09:18 | 2021-07-20 09:18 | 0w | 0d |  |  |  |  |  |  |  |  |

| ID | WBS | Task | Duration | Start | Finish | Complete | Remaining | Baseline start | Baseline finish | Baseline duration | Total slack | Constraint | Resources | Work | Actual work | Cost | Baseline cost | Actual cost |
| --- | --- | --- | --- | --- | --- | --- | --- | --- | --- | --- | --- | --- | --- | --- | --- | --- | --- | --- |
| 28 | 11 | **Совещание** | 101.12d | 2021-03-03 09:00 A | 2021-07-28 10:00 | 41% | 59.76d | 2021-03-03 09:00 | 2021-07-14 10:00 | 91.12d | 1.28d |  |  | 154h | 63h | 1,342 | 1,220 | 549 |
| 29 | 11.1 | Совещание 1 | 1h | 2021-03-03 09:00 A | 2021-03-03 10:00 A | 100% |  | 2021-03-03 09:00 | 2021-03-03 10:00 | 1h |  | start no earlier than 2021-03-03 08:00 | 3D аниматор; Web-дизайнер; Ведущий программист; Мультимедиа-корреспондент; Системный аналитик; Технический писатель; Художник-дизайнер | 7h | 7h | 61 | 61 | 61 |
| 30 | 11.2 | Совещание 2 | 1h | 2021-03-10 09:00 A | 2021-03-10 10:00 A | 100% |  | 2021-03-10 09:00 | 2021-03-10 10:00 | 1h |  | start no earlier than 2021-03-10 08:00 | 3D аниматор; Web-дизайнер; Ведущий программист; Мультимедиа-корреспондент; Системный аналитик; Технический писатель; Художник-дизайнер | 7h | 7h | 61 | 61 | 61 |
| 31 | 11.3 | Совещание 3 | 1h | 2021-03-17 09:00 A | 2021-03-17 10:00 A | 100% |  | 2021-03-17 09:00 | 2021-03-17 10:00 | 1h |  | start no earlier than 2021-03-17 08:00 | 3D аниматор; Web-дизайнер; Ведущий программист; Мультимедиа-корреспондент; Системный аналитик; Технический писатель; Художник-дизайнер | 7h | 7h | 61 | 61 | 61 |
| 32 | 11.4 | Совещание 4 | 1h | 2021-03-24 09:00 A | 2021-03-24 10:00 A | 100% |  | 2021-03-24 09:00 | 2021-03-24 10:00 | 1h |  | start no earlier than 2021-03-24 08:00 | 3D аниматор; Web-дизайнер; Ведущий программист; Мультимедиа-корреспондент; Системный аналитик; Технический писатель; Художник-дизайнер | 7h | 7h | 61 | 61 | 61 |
| 33 | 11.5 | Совещание 5 | 1h | 2021-03-31 09:00 A | 2021-03-31 10:00 A | 100% |  | 2021-03-31 09:00 | 2021-03-31 10:00 | 1h |  | start no earlier than 2021-03-31 08:00 | 3D аниматор; Web-дизайнер; Ведущий программист; Мультимедиа-корреспондент; Системный аналитик; Технический писатель; Художник-дизайнер | 7h | 7h | 61 | 61 | 61 |
| 34 | 11.6 | Совещание 6 | 1h | 2021-04-07 09:00 A | 2021-04-07 10:00 A | 100% |  | 2021-04-07 09:00 | 2021-04-07 10:00 | 1h |  | start no earlier than 2021-04-07 08:00 | 3D аниматор; Web-дизайнер; Ведущий программист; Мультимедиа-корреспондент; Системный аналитик; Технический писатель; Художник-дизайнер | 7h | 7h | 61 | 61 | 61 |
| 35 | 11.7 | Совещание 7 | 1h | 2021-04-14 09:00 A | 2021-04-14 10:00 A | 100% |  | 2021-04-14 09:00 | 2021-04-14 10:00 | 1h |  | start no earlier than 2021-04-14 08:00 | 3D аниматор; Web-дизайнер; Ведущий программист; Мультимедиа-корреспондент; Системный аналитик; Технический писатель; Художник-дизайнер | 7h | 7h | 61 | 61 | 61 |
| 36 | 11.8 | Совещание 8 | 1h | 2021-04-21 09:00 A | 2021-04-21 10:00 A | 100% |  | 2021-04-21 09:00 | 2021-04-21 10:00 | 1h |  | start no earlier than 2021-04-21 08:00 | 3D аниматор; Web-дизайнер; Ведущий программист; Мультимедиа-корреспондент; Системный аналитик; Технический писатель; Художник-дизайнер | 7h | 7h | 61 | 61 | 61 |
| 37 | 11.9 | Совещание 9 | 1h | 2021-04-28 09:00 A | 2021-04-28 10:00 A | 100% |  | 2021-04-28 09:00 | 2021-04-28 10:00 | 1h |  | start no earlier than 2021-04-28 08:00 | 3D аниматор; Web-дизайнер; Ведущий программист; Мультимедиа-корреспондент; Системный аналитик; Технический писатель; Художник-дизайнер | 7h | 7h | 61 | 61 | 61 |
| 38 | 11.10 | Совещание 10 | 1h | 2021-05-05 09:00 | 2021-05-05 10:00 |  |  | 2021-05-05 09:00 | 2021-05-05 10:00 | 1h | 59.28d | start no earlier than 2021-05-05 08:00 | 3D аниматор; Web-дизайнер; Ведущий программист; Мультимедиа-корреспондент; Системный аналитик; Технический писатель; Художник-дизайнер | 7h |  | 61 | 61 |  |
| 39 | 11.11 | Совещание 11 | 1h | 2021-05-12 09:00 | 2021-05-12 10:00 |  |  | 2021-05-12 09:00 | 2021-05-12 10:00 | 1h | 55.28d | start no earlier than 2021-05-12 08:00 | 3D аниматор; Web-дизайнер; Ведущий программист; Мультимедиа-корреспондент; Системный аналитик; Технический писатель; Художник-дизайнер | 7h |  | 61 | 61 |  |
| 40 | 11.12 | Совещание 12 | 1h | 2021-05-19 09:00 | 2021-05-19 10:00 |  |  | 2021-05-19 09:00 | 2021-05-19 10:00 | 1h | 50.28d | start no earlier than 2021-05-19 08:00 | 3D аниматор; Web-дизайнер; Ведущий программист; Мультимедиа-корреспондент; Системный аналитик; Технический писатель; Художник-дизайнер | 7h |  | 61 | 61 |  |
| 41 | 11.13 | Совещание 13 | 1h | 2021-05-26 09:00 | 2021-05-26 10:00 |  |  | 2021-05-26 09:00 | 2021-05-26 10:00 | 1h | 45.28d | start no earlier than 2021-05-26 08:00 | 3D аниматор; Web-дизайнер; Ведущий программист; Мультимедиа-корреспондент; Системный аналитик; Технический писатель; Художник-дизайнер | 7h |  | 61 | 61 |  |
| 42 | 11.14 | Совещание 14 | 1h | 2021-06-02 09:00 | 2021-06-02 10:00 |  |  | 2021-06-02 09:00 | 2021-06-02 10:00 | 1h | 40.28d | start no earlier than 2021-06-02 08:00 | 3D аниматор; Web-дизайнер; Ведущий программист; Мультимедиа-корреспондент; Системный аналитик; Технический писатель; Художник-дизайнер | 7h |  | 61 | 61 |  |
| 43 | 11.15 | Совещание 15 | 1h | 2021-06-09 09:00 | 2021-06-09 10:00 |  |  | 2021-06-09 09:00 | 2021-06-09 10:00 | 1h | 35.28d | start no earlier than 2021-06-09 08:00 | 3D аниматор; Web-дизайнер; Ведущий программист; Мультимедиа-корреспондент; Системный аналитик; Технический писатель; Художник-дизайнер | 7h |  | 61 | 61 |  |
| 44 | 11.16 | Совещание 16 | 1h | 2021-06-16 09:00 | 2021-06-16 10:00 |  |  | 2021-06-16 09:00 | 2021-06-16 10:00 | 1h | 31.28d | start no earlier than 2021-06-16 08:00 | 3D аниматор; Web-дизайнер; Ведущий программист; Мультимедиа-корреспондент; Системный аналитик; Технический писатель; Художник-дизайнер | 7h |  | 61 | 61 |  |
| 45 | 11.17 | Совещание 17 | 1h | 2021-06-23 09:00 | 2021-06-23 10:00 |  |  | 2021-06-23 09:00 | 2021-06-23 10:00 | 1h | 26.28d | start no earlier than 2021-06-23 08:00 | 3D аниматор; Web-дизайнер; Ведущий программист; Мультимедиа-корреспондент; Системный аналитик; Технический писатель; Художник-дизайнер | 7h |  | 61 | 61 |  |
| 46 | 11.18 | Совещание 18 | 1h | 2021-06-30 09:00 | 2021-06-30 10:00 |  |  | 2021-06-30 09:00 | 2021-06-30 10:00 | 1h | 21.28d | start no earlier than 2021-06-30 08:00 | 3D аниматор; Web-дизайнер; Ведущий программист; Мультимедиа-корреспондент; Системный аналитик; Технический писатель; Художник-дизайнер | 7h |  | 61 | 61 |  |
| 47 | 11.19 | Совещание 19 | 1h | 2021-07-07 09:00 | 2021-07-07 10:00 |  |  | 2021-07-07 09:00 | 2021-07-07 10:00 | 1h | 16.28d | start no earlier than 2021-07-07 08:00 | 3D аниматор; Web-дизайнер; Ведущий программист; Мультимедиа-корреспондент; Системный аналитик; Технический писатель; Художник-дизайнер | 7h |  | 61 | 61 |  |
| 48 | 11.20 | Совещание 20 | 1h | 2021-07-14 09:00 | 2021-07-14 10:00 |  |  | 2021-07-14 09:00 | 2021-07-14 10:00 | 1h | 11.28d | start no earlier than 2021-07-14 08:00 | 3D аниматор; Web-дизайнер; Ведущий программист; Мультимедиа-корреспондент; Системный аналитик; Технический писатель; Художник-дизайнер | 7h |  | 61 | 61 |  |
| 49 | 11.21 | Совещание 21 | 1h | 2021-07-21 09:00 | 2021-07-21 10:00 |  |  |  |  |  | 6.28d | start no earlier than 2021-07-21 08:00 | 3D аниматор; Web-дизайнер; Ведущий программист; Мультимедиа-корреспондент; Системный аналитик; Технический писатель; Художник-дизайнер | 7h |  | 61 |  |  |
| 50 | 11.22 | Совещание 22 | 1h | 2021-07-28 09:00 | 2021-07-28 10:00 |  |  |  |  |  | 1.28d | start no earlier than 2021-07-28 08:00 | 3D аниматор; Web-дизайнер; Ведущий программист; Мультимедиа-корреспондент; Системный аналитик; Технический писатель; Художник-дизайнер | 7h |  | 61 |  |  |
| 51 | 12 | **Презентация** | 101.12d | 2021-03-01 09:00 A | 2021-07-26 10:00 | 41% | 59.76d |  |  |  | 3.28d |  |  | 88h | 36h | 880 |  | 360 |
| 52 | 12.1 | Презентация 1 | 1h | 2021-03-01 09:00 A | 2021-03-01 10:00 A | 100% |  |  |  |  |  | start no earlier than 2021-03-01 08:00 | Ведущий программист; Мультимедиа-корреспондент; Web-дизайнер; Системный аналитик | 4h | 4h | 40 |  | 40 |
| 53 | 12.2 | Презентация 2 | 1h | 2021-03-09 09:00 A | 2021-03-09 10:00 A | 100% |  |  |  |  |  | start no earlier than 2021-03-08 08:00 | Ведущий программист; Мультимедиа-корреспондент; Web-дизайнер; Системный аналитик | 4h | 4h | 40 |  | 40 |
| 54 | 12.3 | Презентация 3 | 1h | 2021-03-15 09:00 A | 2021-03-15 10:00 A | 100% |  |  |  |  |  | start no earlier than 2021-03-15 08:00 | Ведущий программист; Мультимедиа-корреспондент; Web-дизайнер; Системный аналитик | 4h | 4h | 40 |  | 40 |
| 55 | 12.4 | Презентация 4 | 1h | 2021-03-22 09:00 A | 2021-03-22 10:00 A | 100% |  |  |  |  |  | start no earlier than 2021-03-22 08:00 | Ведущий программист; Мультимедиа-корреспондент; Web-дизайнер; Системный аналитик | 4h | 4h | 40 |  | 40 |
| 56 | 12.5 | Презентация 5 | 1h | 2021-03-29 09:00 A | 2021-03-29 10:00 A | 100% |  |  |  |  |  | start no earlier than 2021-03-29 08:00 | Ведущий программист; Мультимедиа-корреспондент; Web-дизайнер; Системный аналитик | 4h | 4h | 40 |  | 40 |
| 57 | 12.6 | Презентация 6 | 1h | 2021-04-05 09:00 A | 2021-04-05 10:00 A | 100% |  |  |  |  |  | start no earlier than 2021-04-05 08:00 | Ведущий программист; Мультимедиа-корреспондент; Web-дизайнер; Системный аналитик | 4h | 4h | 40 |  | 40 |
| 58 | 12.7 | Презентация 7 | 1h | 2021-04-12 09:00 A | 2021-04-12 10:00 A | 100% |  |  |  |  |  | start no earlier than 2021-04-12 08:00 | Ведущий программист; Мультимедиа-корреспондент; Web-дизайнер; Системный аналитик | 4h | 4h | 40 |  | 40 |
| 59 | 12.8 | Презентация 8 | 1h | 2021-04-19 09:00 A | 2021-04-19 10:00 A | 100% |  |  |  |  |  | start no earlier than 2021-04-19 08:00 | Ведущий программист; Мультимедиа-корреспондент; Web-дизайнер; Системный аналитик | 4h | 4h | 40 |  | 40 |
| 60 | 12.9 | Презентация 9 | 1h | 2021-04-26 09:00 A | 2021-04-26 10:00 A | 100% |  |  |  |  |  | start no earlier than 2021-04-26 08:00 | Ведущий программист; Мультимедиа-корреспондент; Web-дизайнер; Системный аналитик | 4h | 4h | 40 |  | 40 |
| 61 | 12.10 | Презентация 10 | 1h | 2021-05-04 09:00 | 2021-05-04 10:00 |  |  |  |  |  | 60.28d | start no earlier than 2021-05-03 08:00 | Ведущий программист; Мультимедиа-корреспондент; Web-дизайнер; Системный аналитик | 4h |  | 40 |  |  |
| 62 | 12.11 | Презентация 11 | 1h | 2021-05-11 09:00 | 2021-05-11 10:00 |  |  |  |  |  | 56.28d | start no earlier than 2021-05-10 08:00 | Ведущий программист; Мультимедиа-корреспондент; Web-дизайнер; Системный аналитик | 4h |  | 40 |  |  |
| 63 | 12.12 | Презентация 12 | 1h | 2021-05-17 09:00 | 2021-05-17 10:00 |  |  |  |  |  | 52.28d | start no earlier than 2021-05-17 08:00 | Ведущий программист; Мультимедиа-корреспондент; Web-дизайнер; Системный аналитик | 4h |  | 40 |  |  |
| 64 | 12.13 | Презентация 13 | 1h | 2021-05-24 09:00 | 2021-05-24 10:00 |  |  |  |  |  | 47.28d | start no earlier than 2021-05-24 08:00 | Ведущий программист; Мультимедиа-корреспондент; Web-дизайнер; Системный аналитик | 4h |  | 40 |  |  |
| 65 | 12.14 | Презентация 14 | 1h | 2021-05-31 09:00 | 2021-05-31 10:00 |  |  |  |  |  | 42.28d | start no earlier than 2021-05-31 08:00 | Ведущий программист; Мультимедиа-корреспондент; Web-дизайнер; Системный аналитик | 4h |  | 40 |  |  |
| 66 | 12.15 | Презентация 15 | 1h | 2021-06-07 09:00 | 2021-06-07 10:00 |  |  |  |  |  | 37.28d | start no earlier than 2021-06-07 08:00 | Ведущий программист; Мультимедиа-корреспондент; Web-дизайнер; Системный аналитик | 4h |  | 40 |  |  |
| 67 | 12.16 | Презентация 16 | 1h | 2021-06-15 09:00 | 2021-06-15 10:00 |  |  |  |  |  | 32.28d | start no earlier than 2021-06-14 08:00 | Ведущий программист; Мультимедиа-корреспондент; Web-дизайнер; Системный аналитик | 4h |  | 40 |  |  |
| 68 | 12.17 | Презентация 17 | 1h | 2021-06-21 09:00 | 2021-06-21 10:00 |  |  |  |  |  | 28.28d | start no earlier than 2021-06-21 08:00 | Ведущий программист; Мультимедиа-корреспондент; Web-дизайнер; Системный аналитик | 4h |  | 40 |  |  |
| 69 | 12.18 | Презентация 18 | 1h | 2021-06-28 09:00 | 2021-06-28 10:00 |  |  |  |  |  | 23.28d | start no earlier than 2021-06-28 08:00 | Ведущий программист; Мультимедиа-корреспондент; Web-дизайнер; Системный аналитик | 4h |  | 40 |  |  |
| 70 | 12.19 | Презентация 19 | 1h | 2021-07-05 09:00 | 2021-07-05 10:00 |  |  |  |  |  | 18.28d | start no earlier than 2021-07-05 08:00 | Ведущий программист; Мультимедиа-корреспондент; Web-дизайнер; Системный аналитик | 4h |  | 40 |  |  |
| 71 | 12.20 | Презентация 20 | 1h | 2021-07-12 09:00 | 2021-07-12 10:00 |  |  |  |  |  | 13.28d | start no earlier than 2021-07-12 08:00 | Ведущий программист; Мультимедиа-корреспондент; Web-дизайнер; Системный аналитик | 4h |  | 40 |  |  |
| 72 | 12.21 | Презентация 21 | 1h | 2021-07-19 09:00 | 2021-07-19 10:00 |  |  |  |  |  | 8.28d | start no earlier than 2021-07-19 08:00 | Ведущий программист; Мультимедиа-корреспондент; Web-дизайнер; Системный аналитик | 4h |  | 40 |  |  |
| 73 | 12.22 | Презентация 22 | 1h | 2021-07-26 09:00 | 2021-07-26 10:00 |  |  |  |  |  | 3.28d | start no earlier than 2021-07-26 08:00 | Web-дизайнер; Ведущий программист; Мультимедиа-корреспондент; Системный аналитик | 4h |  | 40 |  |  |
