# lab_01_4

Schedule from MS Project, 2021-03-01 to 2021-07-27, status date 2021-04-30, costs in р., A marks actual dates.
Microsoft
Количество работников - 16 человек / Бюджет - 50 000 рублей / Продолжительность - 6 месяцев

## Calendars

- Стандартный: Mon-Fri 09:00-13:00, 14:00-18:00; Sat-Sun off. Exceptions (off unless hours are given): 2021-03-08 (Международный женский день), 2021-05-03 (Майские каникулы), 2021-05-09 to 2021-05-10 (День победы), 2021-06-12 to 2021-06-14 (День России).

## Resources

| Resource | Group | Rate | Cost per use |
| --- | --- | --- | --- |
| Ведущий программист | Программирование | 10 | 100 |
| Программист#1 | Программирование | 7 | 50 |
| Программист#2 | Программирование | 7 | 50 |
| Программист#3 | Программирование | 7 | 50 |
| Программист#4 | Программирование | 7 | 50 |
| Системный аналитик | Анализ | 20 | 300 |
| Художник-дизайнер | Дизайн | 8 | 70 |
| Технический писатель | Документация | 5 | 20 |
| Web-дизайнер | Internet | 7 | 50 |
| 3D аниматор | Дизайн | 8 | 70 |
| Мультимедиа-корреспондент | М-медиа | 3 | 20 |
| Наборщик данных#1 | Ввод данных | 2 | 10 |
| Наборщик данных#2 | Ввод данных | 2 | 10 |
| Наборщик данных#3 | Ввод данных | 2 | 10 |
| Наборщик данных#4 | Ввод данных | 2 | 10 |
| Наборщик данных#5 | Ввод данных | 2 | 10 |
| Дополнительный сервер | Аренда | 2 |  |
| Собственный сервер | Аренда | 4500 |  |
| Дополнительный программист | Программирование | 7 |  |

## Schedule

| ID | WBS | Task | Type | Duration | Start | Finish | Predecessors | Complete | Remaining | Baseline start | Baseline finish | Baseline duration | Total slack | Free slack | Constraint | Resources | Work | Actual work | Cost | Baseline cost | Actual cost |
| --- | --- | --- | --- | --- | --- | --- | --- | --- | --- | --- | --- | --- | --- | --- | --- | --- | --- | --- | --- | --- | --- |
| 1 | 1 | Начало проекта | milestone | 0w | 2021-03-01 08:00 A | 2021-03-01 08:00 A |  | 100% |  | 2021-03-01 08:00 | 2021-03-01 08:00 | 0w |  |  |  |  |  |  |  |  |  |
| 2 | 2 | **Анализ** |  | 26.25d | 2021-03-01 10:00 A | 2021-04-07 12:00 A |  | 100% |  |  |  |  |  |  |  |  | 320h | 320h | 5,900 |  | 5,900 |
| 3 | 2.1 | Анализ и построение структуры базы объектов |  | 2w | 2021-03-23 17:00 A | 2021-04-07 12:00 A |  | 100% |  | 2021-03-23 12:00 | 2021-04-06 15:00 | 2w |  |  |  | Системный аналитик | 80h | 80h | 1,900 | 1,900 | 1,900 |
| 4 | 2.2 | Анализ и проектирование ядра |  | 3w | 2021-03-01 10:00 A | 2021-03-23 17:00 A |  | 100% |  | 2021-03-01 09:00 | 2021-03-23 12:00 | 3w |  |  |  | Ведущий программист; Системный аналитик | 240h | 240h | 4,000 | 4,000 | 4,000 |
| 5 | 3 | **Разработка** |  | 31.39d | 2021-03-01 09:00 A | 2021-04-14 12:09 |  | 68% | 10.02d |  |  |  | 56.04d |  |  |  | 749.18h | 581.18h | 6,508.53 |  | 4,902.53 |
| 6 | 3.1 | Разработка 2D графических элементов |  | 3.73w | 2021-03-01 09:00 A | 2021-03-29 13:00 A |  | 100% |  | 2021-03-01 09:00 | 2021-03-23 12:00 | 3w |  |  |  | Художник-дизайнер | 120h | 120h | 1,030 | 1,030 | 1,030 |
| 7 | 3.2 | Разработка 3D графичиских элементов |  | 2w | 2021-03-01 09:00 A | 2021-03-16 11:00 A | 6SS | 100% |  | 2021-03-01 09:00 | 2021-03-16 11:00 | 2w |  |  |  | 3D аниматор | 80h | 80h | 710 | 710 | 710 |
| 8 | 3.3 | Создание модели ядра |  | 2.93w | 2021-03-23 17:00 A | 2021-04-13 14:02 A | 4 | 100% |  | 2021-03-23 12:00 | 2021-04-06 12:49 | 2.02w |  |  |  | Ведущий программист; Программист#1; Программист#2; Программист#3; Программист#4; Дополнительный программист | 381.18h | 381.18h | 3,162.53 | 3,336.46 | 3,162.53 |
| 9 | 3.4 | Разработка дизайна руководства |  | 1w | 2021-03-01 16:26 | 2021-04-14 12:09 |  |  |  | 2021-06-02 11:52 | 2021-06-17 14:52 | 1w | 56.04d | 0d |  | Художник-дизайнер | 40h |  | 390 | 390 |  |
| 10 | 3.5 | Разработка структуры сайта |  | 1d | 2021-03-03 16:26 | 2021-03-04 16:26 | 26SS |  |  | 2021-06-04 11:52 | 2021-06-07 11:52 | 1d | 56.04d | 0d |  | Web-дизайнер | 8h |  | 106 | 106 |  |
| 11 | 3.6 | Разработка дизайна сайта |  | 2.85w | 2021-03-04 16:26 | 2021-04-13 17:00 | 10 |  |  | 2021-06-07 11:52 | 2021-06-17 12:52 | 1.38w | 56.04d | 0d |  | 3D аниматор; Web-дизайнер; Художник-дизайнер | 120h |  | 1,110 | 1,110 |  |
| 12 | 4 | **Программирование** |  | 67.84d | 2021-03-16 11:00 A | 2021-06-23 09:41 |  | 51% | 33.43d |  |  |  | 24.91d |  |  |  | 1800h | 600h | 13,985.02 |  | 4,690 |
| 13 | 4.1 | Создание заставки |  | 3w | 2021-03-16 11:00 A | 2021-04-06 15:00 A | 7 | 100% |  | 2021-03-16 11:00 | 2021-04-06 15:00 | 3w |  |  |  | 3D аниматор | 120h | 120h | 1,030 | 1,030 | 1,030 |
| 14 | 4.2 | Программирование интерфейса |  | 1.5w | 2021-06-10 14:41 A | 2021-06-23 09:41 A |  | 100% |  | 2021-06-04 16:52 | 2021-06-17 11:52 | 1.5w |  |  |  | Программист#3; Программист#4; Программист#2; Дополнительный программист | 240h | 240h | 1,830 | 1,880 | 1,830 |
| 15 | 4.3 | Программирование средств обработки базы объектов |  | 3w | 2021-04-09 09:00 A | 2021-04-29 18:00 A | 3 | 100% |  | 2021-04-07 15:49 | 2021-04-19 10:49 | 1.5w |  |  | finish no earlier than 2021-04-22 18:00 | Программист#3; Программист#4; Программист#2; Дополнительный программист | 240h | 240h | 1,830 | 1,880 | 1,830 |
| 16 | 4.4 | Создание рабочей версии ядра |  | 7.29w | 2021-04-19 10:13 | 2021-06-10 14:41 | 22 |  |  | 2021-04-07 15:49 | 2021-06-04 16:52 | 8w | 32.41d |  |  | Ведущий программист; Программист#2; Программист#3; Программист#4; Дополнительный программист | 1200h |  | 9,295.02 | 9,379.88 |  |
| 17 | 5 | **Наполнение** |  | 103d | 2021-03-01 09:00 | 2021-07-27 18:00 |  |  |  |  |  |  | 0d |  |  |  | 2760h |  | 6,480 |  |  |
| 18 | 5.1 | Наполнение базы объектов |  | 12w | 2021-04-30 09:00 | 2021-07-27 18:00 | 15 |  |  | 2021-04-19 10:49 | 2021-07-15 10:49 | 12w | 0d |  |  | Наборщик данных#1; Наборщик данных#2; Наборщик данных#3; Наборщик данных#4; Наборщик данных#5 | 2400h |  | 4,850 | 4,850 |  |
| 19 | 5.2 | Создание мультимедиа - наполнения |  | 6w | 2021-03-01 09:00 | 2021-04-15 15:00 |  |  |  | 2021-04-06 15:00 | 2021-05-21 13:00 | 6w | 70.38d |  |  | Мультимедиа-корреспондент | 240h |  | 740 | 740 |  |
| 20 | 5.3 | Наполнение сайта |  | 3w | 2021-04-13 17:00 | 2021-05-06 17:41 | 11 |  |  | 2021-06-17 12:52 | 2021-07-08 16:52 | 3w | 56.04d |  |  | Web-дизайнер | 120h |  | 890 | 890 |  |
| 21 | 6 | **Тестирование** |  | 68.78d | 2021-04-13 16:17 A | 2021-07-22 14:31 |  | 10% | 62.13d |  |  |  | 3.44d |  |  |  | 520h | 40h | 4,395.56 |  | 430 |
| 22 | 6.1 | Тестирование модели ядра |  | 0.33w | 2021-04-13 16:17 A | 2021-04-19 10:13 A | 8 | 100% |  | 2021-04-06 12:49 | 2021-04-07 15:49 | 0.25w |  |  |  | Программист#2; Программист#3; Программист#4 | 40h | 40h | 430 | 480 | 430 |
| 23 | 6.2 | Тестирование сайта |  | 3.11w | 2021-07-01 09:00 | 2021-07-22 14:31 |  |  |  | 2021-07-01 16:52 | 2021-07-20 09:18 | 2.44w | 3.44d | 0d | start no earlier than 2021-07-01 08:00 | Ведущий программист; Программист#2; Программист#3; Программист#4 | 480h |  | 3,965.56 | 3,945.15 |  |
| 24 | 7 | **Документация** |  | 85.69d | 2021-03-03 16:26 | 2021-07-07 13:00 |  |  |  |  |  |  | 14.5d |  |  |  | 200h |  | 1,040 |  |  |
| 25 | 7.1 | Создание справочной системы |  | 2w | 2021-06-23 10:00 | 2021-07-07 13:00 | 14 |  |  | 2021-06-28 15:52 | 2021-07-12 17:52 | 2w | 14.5d |  |  | Технический писатель | 80h |  | 420 | 420 |  |
| 26 | 7.2 | Написание руководства пользователя |  | 3w | 2021-03-03 16:26 | 2021-03-26 12:41 | 9SS+2d |  |  | 2021-06-04 11:52 | 2021-06-28 15:52 | 3w | 56.04d | 0d |  | Технический писатель | 120h |  | 620 | 620 |  |
| 27 | 8 | Сдача сайта в эксплуатацию | milestone | 0w | 2021-07-22 14:31 | 2021-07-22 14:31 | 23 |  |  | 2021-07-20 09:18 | 2021-07-20 09:18 | 0w | 3.44d |  |  |  |  |  |  |  |  |

| ID | WBS | Task | Duration | Start | Finish | Complete | Remaining | Baseline start | Baseline finish | Baseline duration | Total slack | Constraint | Resources | Work | Actual work | Cost | Baseline cost | Actual cost |
| --- | --- | --- | --- | --- | --- | --- | --- | --- | --- | --- | --- | --- | --- | --- | --- | --- | --- | --- |
| 28 | 9 | **Совещание** | 96.12d | 2021-03-03 09:00 A | 2021-07-21 10:00 | 43% | 54.93d | 2021-03-03 09:00 | 2021-07-14 10:00 | 91.12d | 4.88d |  |  | 147h | 63h | 1,281 | 1,220 | 549 |
| 29 | 9.1 | Совещание 1 | 1h | 2021-03-03 09:00 A | 2021-03-03 10:00 A | 100% |  | 2021-03-03 09:00 | 2021-03-03 10:00 | 1h |  | start no earlier than 2021-03-03 08:00 | 3D аниматор; Web-дизайнер; Ведущий программист; Мультимедиа-корреспондент; Системный аналитик; Технический писатель; Художник-дизайнер | 7h | 7h | 61 | 61 | 61 |
| 30 | 9.2 | Совещание 2 | 1h | 2021-03-10 09:00 A | 2021-03-10 10:00 A | 100% |  | 2021-03-10 09:00 | 2021-03-10 10:00 | 1h |  | start no earlier than 2021-03-10 08:00 | 3D аниматор; Web-дизайнер; Ведущий программист; Мультимедиа-корреспондент; Системный аналитик; Технический писатель; Художник-дизайнер | 7h | 7h | 61 | 61 | 61 |
| 31 | 9.3 | Совещание 3 | 1h | 2021-03-17 09:00 A | 2021-03-17 10:00 A | 100% |  | 2021-03-17 09:00 | 2021-03-17 10:00 | 1h |  | start no earlier than 2021-03-17 08:00 | 3D аниматор; Web-дизайнер; Ведущий программист; Мультимедиа-корреспондент; Системный аналитик; Технический писатель; Художник-дизайнер | 7h | 7h | 61 | 61 | 61 |
| 32 | 9.4 | Совещание 4 | 1h | 2021-03-24 09:00 A | 2021-03-24 10:00 A | 100% |  | 2021-03-24 09:00 | 2021-03-24 10:00 | 1h |  | start no earlier than 2021-03-24 08:00 | 3D аниматор; Web-дизайнер; Ведущий программист; Мультимедиа-корреспондент; Системный аналитик; Технический писатель; Художник-дизайнер | 7h | 7h | 61 | 61 | 61 |
| 33 | 9.5 | Совещание 5 | 1h | 2021-03-31 09:00 A | 2021-03-31 10:00 A | 100% |  | 2021-03-31 09:00 | 2021-03-31 10:00 | 1h |  | start no earlier than 2021-03-31 08:00 | 3D аниматор; Web-дизайнер; Ведущий программист; Мультимедиа-корреспондент; Системный аналитик; Технический писатель; Художник-дизайнер | 7h | 7h | 61 | 61 | 61 |
| 34 | 9.6 | Совещание 6 | 1h | 2021-04-07 09:00 A | 2021-04-07 10:00 A | 100% |  | 2021-04-07 09:00 | 2021-04-07 10:00 | 1h |  | start no earlier than 2021-04-07 08:00 | 3D аниматор; Web-дизайнер; Ведущий программист; Мультимедиа-корреспондент; Системный аналитик; Технический писатель; Художник-дизайнер | 7h | 7h | 61 | 61 | 61 |
| 35 | 9.7 | Совещание 7 | 1h | 2021-04-14 09:00 A | 2021-04-14 10:00 A | 100% |  | 2021-04-14 09:00 | 2021-04-14 10:00 | 1h |  | start no earlier than 2021-04-14 08:00 | 3D аниматор; Web-дизайнер; Ведущий программист; Мультимедиа-корреспондент; Системный аналитик; Технический писатель; Художник-дизайнер | 7h | 7h | 61 | 61 | 61 |
| 36 | 9.8 | Совещание 8 | 1h | 2021-04-21 09:00 A | 2021-04-21 10:00 A | 100% |  | 2021-04-21 09:00 | 2021-04-21 10:00 | 1h |  | start no earlier than 2021-04-21 08:00 | 3D аниматор; Web-дизайнер; Ведущий программист; Мультимедиа-корреспондент; Системный аналитик; Технический писатель; Художник-дизайнер | 7h | 7h | 61 | 61 | 61 |
| 37 | 9.9 | Совещание 9 | 1h | 2021-04-28 09:00 A | 2021-04-28 10:00 A | 100% |  | 2021-04-28 09:00 | 2021-04-28 10:00 | 1h |  | start no earlier than 2021-04-28 08:00 | 3D аниматор; Web-дизайнер; Ведущий программист; Мультимедиа-корреспондент; Системный аналитик; Технический писатель; Художник-дизайнер | 7h | 7h | 61 | 61 | 61 |
| 38 | 9.10 | Совещание 10 | 1h | 2021-05-05 09:00 | 2021-05-05 10:00 |  |  | 2021-05-05 09:00 | 2021-05-05 10:00 | 1h | 57.88d | start no earlier than 2021-05-05 08:00 | 3D аниматор; Web-дизайнер; Ведущий программист; Мультимедиа-корреспондент; Системный аналитик; Технический писатель; Художник-дизайнер | 7h |  | 61 | 61 |  |
| 39 | 9.11 | Совещание 11 | 1h | 2021-05-12 09:00 | 2021-05-12 10:00 |  |  | 2021-05-12 09:00 | 2021-05-12 10:00 | 1h | 53.88d | start no earlier than 2021-05-12 08:00 | 3D аниматор; Web-дизайнер; Ведущий программист; Мультимедиа-корреспондент; Системный аналитик; Технический писатель; Художник-дизайнер | 7h |  | 61 | 61 |  |
| 40 | 9.12 | Совещание 12 | 1h | 2021-05-19 09:00 | 2021-05-19 10:00 |  |  | 2021-05-19 09:00 | 2021-05-19 10:00 | 1h | 48.88d | start no earlier than 2021-05-19 08:00 | 3D аниматор; Web-дизайнер; Ведущий программист; Мультимедиа-корреспондент; Системный аналитик; Технический писатель; Художник-дизайнер | 7h |  | 61 | 61 |  |
| 41 | 9.13 | Совещание 13 | 1h | 2021-05-26 09:00 | 2021-05-26 10:00 |  |  | 2021-05-26 09:00 | 2021-05-26 10:00 | 1h | 43.88d | start no earlier than 2021-05-26 08:00 | 3D аниматор; Web-дизайнер; Ведущий программист; Мультимедиа-корреспондент; Системный аналитик; Технический писатель; Художник-дизайнер | 7h |  | 61 | 61 |  |
| 42 | 9.14 | Совещание 14 | 1h | 2021-06-02 09:00 | 2021-06-02 10:00 |  |  | 2021-06-02 09:00 | 2021-06-02 10:00 | 1h | 38.88d | start no earlier than 2021-06-02 08:00 | 3D аниматор; Web-дизайнер; Ведущий программист; Мультимедиа-корреспондент; Системный аналитик; Технический писатель; Художник-дизайнер | 7h |  | 61 | 61 |  |
| 43 | 9.15 | Совещание 15 | 1h | 2021-06-09 09:00 | 2021-06-09 10:00 |  |  | 2021-06-09 09:00 | 2021-06-09 10:00 | 1h | 33.88d | start no earlier than 2021-06-09 08:00 | 3D аниматор; Web-дизайнер; Ведущий программист; Мультимедиа-корреспондент; Системный аналитик; Технический писатель; Художник-дизайнер | 7h |  | 61 | 61 |  |
| 44 | 9.16 | Совещание 16 | 1h | 2021-06-16 09:00 | 2021-06-16 10:00 |  |  | 2021-06-16 09:00 | 2021-06-16 10:00 | 1h | 29.88d | start no earlier than 2021-06-16 08:00 | 3D аниматор; Web-дизайнер; Ведущий программист; Мультимедиа-корреспондент; Системный аналитик; Технический писатель; Художник-дизайнер | 7h |  | 61 | 61 |  |
| 45 | 9.17 | Совещание 17 | 1h | 2021-06-23 09:00 | 2021-06-23 10:00 |  |  | 2021-06-23 09:00 | 2021-06-23 10:00 | 1h | 24.88d | start no earlier than 2021-06-23 08:00 | 3D аниматор; Web-дизайнер; Ведущий программист; Мультимедиа-корреспондент; Системный аналитик; Технический писатель; Художник-дизайнер | 7h |  | 61 | 61 |  |
| 46 | 9.18 | Совещание 18 | 1h | 2021-06-30 09:00 | 2021-06-30 10:00 |  |  | 2021-06-30 09:00 | 2021-06-30 10:00 | 1h | 19.88d | start no earlier than 2021-06-30 08:00 | 3D аниматор; Web-дизайнер; Ведущий программист; Мультимедиа-корреспондент; Системный аналитик; Технический писатель; Художник-дизайнер | 7h |  | 61 | 61 |  |
| 47 | 9.19 | Совещание 19 | 1h | 2021-07-07 09:00 | 2021-07-07 10:00 |  |  | 2021-07-07 09:00 | 2021-07-07 10:00 | 1h | 14.88d | start no earlier than 2021-07-07 08:00 | 3D аниматор; Web-дизайнер; Ведущий программист; Мультимедиа-корреспондент; Системный аналитик; Технический писатель; Художник-дизайнер | 7h |  | 61 | 61 |  |
| 48 | 9.20 | Совещание 20 | 1h | 2021-07-14 09:00 | 2021-07-14 10:00 |  |  | 2021-07-14 09:00 | 2021-07-14 10:00 | 1h | 9.88d | start no earlier than 2021-07-14 08:00 | 3D аниматор; Web-дизайнер; Ведущий программист; Мультимедиа-корреспондент; Системный аналитик; Технический писатель; Художник-дизайнер | 7h |  | 61 | 61 |  |
| 49 | 9.21 | Совещание 21 | 1h | 2021-07-21 09:00 | 2021-07-21 10:00 |  |  |  |  |  | 4.88d | start no earlier than 2021-07-21 08:00 | 3D аниматор; Web-дизайнер; Ведущий программист; Мультимедиа-корреспондент; Системный аналитик; Технический писатель; Художник-дизайнер | 7h |  | 61 |  |  |
| 50 | 10 | **Презентация** | 96.12d | 2021-03-01 09:00 A | 2021-07-19 10:00 | 43% | 54.93d |  |  |  | 6.88d |  |  | 84h | 36h | 840 |  | 360 |
| 51 | 10.1 | Презентация 1 | 1h | 2021-03-01 09:00 A | 2021-03-01 10:00 A | 100% |  |  |  |  |  | start no earlier than 2021-03-01 08:00 | Ведущий программист; Мультимедиа-корреспондент; Web-дизайнер; Системный аналитик | 4h | 4h | 40 |  | 40 |
| 52 | 10.2 | Презентация 2 | 1h | 2021-03-09 09:00 A | 2021-03-09 10:00 A | 100% |  |  |  |  |  | start no earlier than 2021-03-08 08:00 | Ведущий программист; Мультимедиа-корреспондент; Web-дизайнер; Системный аналитик | 4h | 4h | 40 |  | 40 |
| 53 | 10.3 | Презентация 3 | 1h | 2021-03-15 09:00 A | 2021-03-15 10:00 A | 100% |  |  |  |  |  | start no earlier than 2021-03-15 08:00 | Ведущий программист; Мультимедиа-корреспондент; Web-дизайнер; Системный аналитик | 4h | 4h | 40 |  | 40 |
| 54 | 10.4 | Презентация 4 | 1h | 2021-03-22 09:00 A | 2021-03-22 10:00 A | 100% |  |  |  |  |  | start no earlier than 2021-03-22 08:00 | Ведущий программист; Мультимедиа-корреспондент; Web-дизайнер; Системный аналитик | 4h | 4h | 40 |  | 40 |
| 55 | 10.5 | Презентация 5 | 1h | 2021-03-29 09:00 A | 2021-03-29 10:00 A | 100% |  |  |  |  |  | start no earlier than 2021-03-29 08:00 | Ведущий программист; Мультимедиа-корреспондент; Web-дизайнер; Системный аналитик | 4h | 4h | 40 |  | 40 |
| 56 | 10.6 | Презентация 6 | 1h | 2021-04-05 09:00 A | 2021-04-05 10:00 A | 100% |  |  |  |  |  | start no earlier than 2021-04-05 08:00 | Ведущий программист; Мультимедиа-корреспондент; Web-дизайнер; Системный аналитик | 4h | 4h | 40 |  | 40 |
| 57 | 10.7 | Презентация 7 | 1h | 2021-04-12 09:00 A | 2021-04-12 10:00 A | 100% |  |  |  |  |  | start no earlier than 2021-04-12 08:00 | Ведущий программист; Мультимедиа-корреспондент; Web-дизайнер; Системный аналитик | 4h | 4h | 40 |  | 40 |
| 58 | 10.8 | Презентация 8 | 1h | 2021-04-19 09:00 A | 2021-04-19 10:00 A | 100% |  |  |  |  |  | start no earlier than 2021-04-19 08:00 | Ведущий программист; Мультимедиа-корреспондент; Web-дизайнер; Системный аналитик | 4h | 4h | 40 |  | 40 |
| 59 | 10.9 | Презентация 9 | 1h | 2021-04-26 09:00 A | 2021-04-26 10:00 A | 100% |  |  |  |  |  | start no earlier than 2021-04-26 08:00 | Ведущий программист; Мультимедиа-корреспондент; Web-дизайнер; Системный аналитик | 4h | 4h | 40 |  | 40 |
| 60 | 10.10 | Презентация 10 | 1h | 2021-05-04 09:00 | 2021-05-04 10:00 |  |  |  |  |  | 58.88d | start no earlier than 2021-05-03 08:00 | Ведущий программист; Мультимедиа-корреспондент; Web-дизайнер; Системный аналитик | 4h |  | 40 |  |  |
| 61 | 10.11 | Презентация 11 | 1h | 2021-05-11 09:00 | 2021-05-11 10:00 |  |  |  |  |  | 54.88d | start no earlier than 2021-05-10 08:00 | Ведущий программист; Мультимедиа-корреспондент; Web-дизайнер; Системный аналитик | 4h |  | 40 |  |  |
| 62 | 10.12 | Презентация 12 | 1h | 2021-05-17 09:00 | 2021-05-17 10:00 |  |  |  |  |  | 50.88d | start no earlier than 2021-05-17 08:00 | Ведущий программист; Мультимедиа-корреспондент; Web-дизайнер; Системный аналитик | 4h |  | 40 |  |  |
| 63 | 10.13 | Презентация 13 | 1h | 2021-05-24 09:00 | 2021-05-24 10:00 |  |  |  |  |  | 45.88d | start no earlier than 2021-05-24 08:00 | Ведущий программист; Мультимедиа-корреспондент; Web-дизайнер; Системный аналитик | 4h |  | 40 |  |  |
| 64 | 10.14 | Презентация 14 | 1h | 2021-05-31 09:00 | 2021-05-31 10:00 |  |  |  |  |  | 40.88d | start no earlier than 2021-05-31 08:00 | Ведущий программист; Мультимедиа-корреспондент; Web-дизайнер; Системный аналитик | 4h |  | 40 |  |  |
| 65 | 10.15 | Презентация 15 | 1h | 2021-06-07 09:00 | 2021-06-07 10:00 |  |  |  |  |  | 35.88d | start no earlier than 2021-06-07 08:00 | Ведущий программист; Мультимедиа-корреспондент; Web-дизайнер; Системный аналитик | 4h |  | 40 |  |  |
| 66 | 10.16 | Презентация 16 | 1h | 2021-06-15 09:00 | 2021-06-15 10:00 |  |  |  |  |  | 30.88d | start no earlier than 2021-06-14 08:00 | Ведущий программист; Мультимедиа-корреспондент; Web-дизайнер; Системный аналитик | 4h |  | 40 |  |  |
| 67 | 10.17 | Презентация 17 | 1h | 2021-06-21 09:00 | 2021-06-21 10:00 |  |  |  |  |  | 26.88d | start no earlier than 2021-06-21 08:00 | Ведущий программист; Мультимедиа-корреспондент; Web-дизайнер; Системный аналитик | 4h |  | 40 |  |  |
| 68 | 10.18 | Презентация 18 | 1h | 2021-06-28 09:00 | 2021-06-28 10:00 |  |  |  |  |  | 21.88d | start no earlier than 2021-06-28 08:00 | Ведущий программист; Мультимедиа-корреспондент; Web-дизайнер; Системный аналитик | 4h |  | 40 |  |  |
| 69 | 10.19 | Презентация 19 | 1h | 2021-07-05 09:00 | 2021-07-05 10:00 |  |  |  |  |  | 16.88d | start no earlier than 2021-07-05 08:00 | Ведущий программист; Мультимедиа-корреспондент; Web-дизайнер; Системный аналитик | 4h |  | 40 |  |  |
| 70 | 10.20 | Презентация 20 | 1h | 2021-07-12 09:00 | 2021-07-12 10:00 |  |  |  |  |  | 11.88d | start no earlier than 2021-07-12 08:00 | Ведущий программист; Мультимедиа-корреспондент; Web-дизайнер; Системный аналитик | 4h |  | 40 |  |  |
| 71 | 10.21 | Презентация 21 | 1h | 2021-07-19 09:00 | 2021-07-19 10:00 |  |  |  |  |  | 6.88d | start no earlier than 2021-07-19 08:00 | Ведущий программист; Мультимедиа-корреспондент; Web-дизайнер; Системный аналитик | 4h |  | 40 |  |  |
